# 项目任务分解

Schedule from MS Project, 2026-09-03 to 2026-11-06.

## Calendars

- 标准: Mon-Fri 08:00-12:00, 13:00-17:00; Sat-Sun off.

## Resources

| Resource |
| --- |
| 蔡俊杰 |
| 李汶航 |
| 陈泽恩 |
| 全员 |
| 欧阳宇康 |
| 29 |

## Schedule

| ID | WBS | Task | Type | Duration | Start | Finish | Predecessors | Total slack | Free slack | Constraint | Resources | Work |
| --- | --- | --- | --- | --- | --- | --- | --- | --- | --- | --- | --- | --- |
| 1 | 1 | **项目启动与规划** |  | 4d | 2026-09-03 | 2026-09-08 |  | 0d |  |  |  | 96h |
| 2 | 1.1 | 项目立项、章程与分工 | manual | 2d | 2026-09-03 | 2026-09-04 |  |  |  |  | 蔡俊杰; 李汶航 | 32h |
| 3 | 1.2 | 开发环境与工具准备 | manual | 2d | 2026-09-03 | 2026-09-04 |  |  |  |  | 蔡俊杰; 陈泽恩 | 32h |
| 4 | 1.3 | 项目介绍与参考资料整理 | manual | 2d | 2026-09-07 | 2026-09-08 | 2 |  |  |  | 蔡俊杰; 李汶航 | 32h |
| 5 | 2 | **需求与设计** |  | 8d | 2026-09-09 | 2026-09-18 |  | 0d |  |  |  | 120h |
| 6 | 2.1 | 需求调查与需求建模 | manual | 3d | 2026-09-09 | 2026-09-11 | 4 |  |  |  | 蔡俊杰; 欧阳宇康 | 48h |
| 7 | 2.2 | 需求规格说明书撰写 | manual | 4d | 2026-09-14 | 2026-09-17 | 6 |  |  |  | 全员 | 32h |
| 8 | 2.3 | 系统设计文档撰写 | manual | 5d | 2026-09-14 | 2026-09-18 | 6 |  |  |  | 蔡俊杰 | 40h |
| 9 | 3 | **系统开发** |  | 13d | 2026-09-07 | 2026-09-23 |  | 0d |  |  |  | 176h |
| 10 | 3.1 | 前端基础页面开发 | manual | 6d | 2026-09-07 | 2026-09-13 | 2 |  |  |  | 李汶航 | 48h |
| 11 | 3.2 | 后端检测闭环（视频源/检测任务/告警/接口） | manual | 5d | 2026-09-14 | 2026-09-18 | 10 |  |  |  | 蔡俊杰; 欧阳宇康 | 80h |
| 12 | 3.3 | 前后端联调与实时画面上线 | manual | 3d | 2026-09-21 | 2026-09-23 | 11 |  |  |  | 蔡俊杰; 李汶航 | 48h |
| 13 | 4 | **数据与模型** |  | 23d? | 2026-09-08 | 2026-10-08 |  | 0d |  |  |  | 440h |
| 14 | 4.1 | 数据集获取与质量体检 |  | 3d? | 2026-09-08 | 2026-09-10 | 3 | 11d | 0d | finish no earlier than 2026-09-10 | 陈泽恩; 欧阳宇康 | 48h |
| 15 | 4.2 | 首轮模型训练与评测 | manual | 3d | 2026-09-11 | 2026-09-15 | 14 |  |  |  | 蔡俊杰 | 24h |
| 16 | 4.3 | 数据清洗与防泄漏重划分 | manual | 4d | 2026-09-11 | 2026-09-16 | 14 |  |  |  | 蔡俊杰; 陈泽恩 | 64h |
| 17 | 4.4 | 烟雾与远距离类数据集补充 | manual | 11d | 2026-09-17 | 2026-10-01 | 16 |  |  |  | 陈泽恩; 李汶航; 欧阳宇康 | 264h |
| 18 | 4.5 | 数据重训与现有模型对比评测 | manual | 5d | 2026-10-02 | 2026-10-08 | 17 |  |  |  | 蔡俊杰 | 40h |
| 19 | 5 | **智能体与远距离识别** |  | 11d | 2026-10-09 | 2026-10-23 |  | 0d |  |  |  | 200h |
| 20 | 5.1 | 切片推理与多尺度检测 | manual | 5d | 2026-10-09 | 2026-10-15 | 18 |  |  |  | 蔡俊杰 | 40h |
| 21 | 5.2 | 智能体复核 | manual | 5d | 2026-10-16 | 2026-10-22 | 20 |  |  |  | 蔡俊杰; 李汶航 | 80h |
| 22 | 5.3 | 远景测试与误报评估 | manual | 5d | 2026-10-19 | 2026-10-23 |  |  |  |  | 陈泽恩; 欧阳宇康 | 80h |
| 23 | 6 | **测试与验收** |  | 25d | 2026-09-24 | 2026-10-28 |  | 0d |  |  |  | 112h |
| 24 | 6.1 | 功能测试与缺陷记录 | manual | 2d | 2026-09-24 | 2026-09-25 | 12 |  |  |  | 欧阳宇康 | 16h |
| 25 | 6.2 | 缺陷修复与回归测试 | manual | 3d | 2026-09-28 | 2026-09-30 | 24 |  |  |  | 李汶航; 蔡俊杰 | 48h |
| 26 | 6.3 | 误报与可靠性测试 | manual | 3d | 2026-10-26 | 2026-10-28 |  |  |  |  | 陈泽恩; 欧阳宇康 | 48h |

| ID | WBS | Task | Type | Duration | Start | Finish | Predecessors | Total slack | Resources | Work |
| --- | --- | --- | --- | --- | --- | --- | --- | --- | --- | --- |
| 27 | 7 | **演示与结项** |  | 6d | 2026-10-29 | 2026-11-05 |  | 0d |  | 64h |
| 28 | 7.1 | 手机推流实测与演示 | manual | 3d | 2026-10-29 | 2026-11-02 | 25, 26 |  | 蔡俊杰; 李汶航 | 48h |
| 29 | 7.2 | 结项报告与材料归档 | manual | 2d | 2026-11-04 | 2026-11-05 |  |  | 全员 | 16h |
| 30 | 8 | **项目里程碑** |  | 47d | 2026-09-03 | 2026-11-06 |  |  |  |  |
| 31 | 8.1 | 需求规格说明书定稿 | milestone, manual | 0d | 2026-09-18 | 2026-09-18 | 7 |  | 蔡俊杰 |  |
| 32 | 8.2 | 系统核心闭环完成 | milestone, manual | 0d | 2026-09-24 | 2026-09-24 | 12 |  | 蔡俊杰 |  |
| 33 | 8.3 | 数据治理与模型重训完成 | milestone, manual | 0d | 2026-10-09 | 2026-10-09 | 18 |  | 蔡俊杰 |  |
| 34 | 8.4 | 智能体与远距离识别完成 | milestone, manual | 0d | 2026-10-26 | 2026-10-26 | 22 |  | 蔡俊杰 |  |
| 35 | 8.5 | 项目结项演示 | milestone, manual | 0d | 2026-11-06 | 2026-11-06 | 29 |  | 全员 |  |
